# Proyecto EcoAlerta - Plan y Cronograma de Testing

How a schedule from MS Project changed from version to version. A marks actual dates.

## Version 1 (data date 2026-11-01, saved 2026-11-01)

Note of the change: docs(testing): poblar Plantilla semaforos.mpp con 45 tareas, WBS, linea base y semaforos calculados

| ID | WBS | Task | Duration | Start | Finish | Predecessors | Complete | Total float | Constraint |
| --- | --- | --- | --- | --- | --- | --- | --- | --- | --- |
| 1 | 1 | **Proyecto EcoAlerta - Ciclo de Vida y Testware de Calidad** | 63.5d? | 2026-08-25 A | 2026-11-20 |  | 99% | 0d |  |
| 2 | 1.1 | **FASE 1: Setup Arquitectura y Prototipos UI/UX** | 10.88d? | 2026-08-25 A | 2026-09-08 A |  | 100% |  |  |
| 3 |  | Setup inicial y arquitectura client/server monorepo | 3.88d | 2026-08-25 A | 2026-08-28 A |  | 100% |  | finish no earlier than 2026-08-28 |
| 4 |  | Wireframes y maquetacion UI/UX HomeScreen inicial | 3d | 2026-08-28 A | 2026-09-02 A | 3 | 100% |  | finish no earlier than 2026-08-30 |
| 5 |  | Setup Backend Express TypeScript y Prisma ORM | 2.88d | 2026-08-28 A | 2026-09-02 A | 3 | 100% |  | finish no earlier than 2026-08-31 |
| 6 |  | Contexto de Carrito y navegacion inicial | 2.88d | 2026-09-02 A | 2026-09-07 A | 5 | 100% |  | finish no earlier than 2026-09-02 |
| 7 |  | Estandares Scrum y alineacion de calidad | 4d | 2026-09-02 A | 2026-09-08 A | 4 | 100% |  | finish no earlier than 2026-09-05 |
| 8 |  | Hito 1: Cimientos de Arquitectura y UI Aprobados | 0d? | 2026-09-08 A | 2026-09-08 A | 7 | 100% |  | start no earlier than 2026-09-07 |
| 9 | 1.2 | **FASE 2: Desarrollo Core Frontend y Modulos Base** | 21.5d? | 2026-09-08 A | 2026-10-08 A |  | 100% |  |  |
| 10 |  | Pantallas Perfil y MasScreen con mockups | 3.88d | 2026-09-08 A | 2026-09-14 A | 8 | 100% |  | finish no earlier than 2026-09-11 |
| 11 |  | Modulo Operativo Agente de Campo y vistas | 4d | 2026-09-08 A | 2026-09-14 A | 8 | 100% |  | finish no earlier than 2026-09-13 |
| 12 |  | Integracion camara nativa Expo y selector galeria | 3d | 2026-09-14 A | 2026-09-17 A | 10 | 100% |  | finish no earlier than 2026-09-13 |
| 13 |  | Refinamiento visual UI de Tienda y Carrito | 3.88d | 2026-09-17 A | 2026-09-23 A | 12 | 100% |  | finish no earlier than 2026-09-16 |
| 14 |  | Integracion Home Administrador Municipal | 6.88d | 2026-09-23 A | 2026-10-02 A | 13 | 100% |  | finish no earlier than 2026-09-29 |
| 15 |  | Revision de usabilidad y pruebas exploratorias | 3.88d | 2026-10-02 A | 2026-10-08 A | 14 | 100% |  | finish no earlier than 2026-09-30 |
| 16 |  | Hito 2: Interfaces Core y Mockups Integrados | 0d? | 2026-10-08 A | 2026-10-08 A | 15 | 100% |  | start no earlier than 2026-09-30 |
| 17 | 1.3 | **FASE 3: Especificacion Formal SDD Base de Datos y Backend** | 14.75d? | 2026-10-08 A | 2026-10-29 A |  | 100% |  |  |
| 18 |  | Migracion a Supabase PostgreSQL y Prisma ORM | 9.88d | 2026-10-08 A | 2026-10-22 A | 16 | 100% |  | finish no earlier than 2026-10-14 |
| 19 |  | Adopcion Spec-Driven Development y Backlog HU | 1.88d | 2026-10-22 A | 2026-10-26 A | 18 | 100% |  | finish no earlier than 2026-10-15 |
| 20 |  | Endpoints REST Triaje Asignacion y Concurrencia | 2d | 2026-10-26 A | 2026-10-28 A | 19 | 100% |  | finish no earlier than 2026-10-18 |
| 21 |  | Integracion Servicios REST y Cliente Movil | 2d | 2026-10-26 A | 2026-10-28 A | 19 | 100% |  | finish no earlier than 2026-10-18 |
| 22 |  | Acreditacion de Puntos Saneamiento y Canjes | 1d | 2026-10-28 A | 2026-10-29 A | 20 | 100% |  | finish no earlier than 2026-10-18 |
| 23 |  | Hito 3: Backend Supabase y Modulos 001-006 Conectados | 0d? | 2026-10-29 A | 2026-10-29 A | 22 | 100% |  | start no earlier than 2026-10-18 |
| 24 | 1.4 | **FASE 4: Finalizacion de Modulos Testware y Correccion Bugs** | 12.25d? | 2026-10-29 A | 2026-11-16 A |  | 100% |  |  |
| 25 |  | Cierre Modulo 001 Auth RBAC y Logout Seguro | 2.88d | 2026-10-29 A | 2026-11-02 A | 23 | 100% |  | finish no earlier than 2026-10-21 |
| 26 |  | Cierre Modulo 002 Reporte Ciudadano y GPS | 3d | 2026-11-03 A | 2026-11-05 A | 25 | 100% |  | finish no earlier than 2026-10-24 |
| 27 |  | Upgrade Expo SDK 58 y Resiliencia de Red | 0.88d | 2026-11-06 A | 2026-11-06 A | 26 | 100% |  | finish no earlier than 2026-10-26 |
| 28 |  | Plan Maestro de Testing IEEE 829 y Matriz RTM | 1.88d | 2026-11-06 A | 2026-11-10 A | 27 | 100% |  | finish no earlier than 2026-10-27 |
| 29 |  | Diseno de 67 Casos de Prueba Detallados | 1.88d | 2026-11-06 A | 2026-11-10 A | 27 | 100% |  | finish no earlier than 2026-10-27 |
| 30 |  | Correccion de BUG-101 en Compresion de Imagen | 1.88d | 2026-11-10 A | 2026-11-12 A | 29 | 100% |  | finish no earlier than 2026-10-28 |
| 31 |  | Correccion de BUG-102 en Reserva Stock Concurrente | 1.88d | 2026-11-10 A | 2026-11-12 A | 29 | 100% |  | finish no earlier than 2026-10-28 |
| 32 |  | Modulo 007 Alta Personal Municipal y Foto Camara | 0.88d | 2026-11-12 A | 2026-11-13 A | 31 | 100% |  | finish no earlier than 2026-10-28 |
| 33 |  | Modulo 007 Gestion Colaboradores y Baja Transaccional | 0.88d | 2026-11-13 A | 2026-11-16 A | 32 | 100% |  | finish no earlier than 2026-10-28 |
| 34 |  | Hito 4: Testware y Defectos 100% Corregidos | 0d? | 2026-11-12 A | 2026-11-12 A | 30 | 100% |  | start no earlier than 2026-10-28 |
| 35 | 1.5 | **FASE 5: Ejecucion de Pruebas E2E Regresion y Modulo 008** | 5.88d? | 2026-11-12 A | 2026-11-20 A |  | 100% |  |  |
| 36 |  | Modulo 008 Onboarding 3 Tarjetas Categorias y Storage | 2d | 2026-11-12 A | 2026-11-16 A | 34 | 100% |  | finish no earlier than 2026-10-31 |
| 37 |  | Ejecucion de Suites E2E y Pruebas de Regresion (146 tests) | 2.88d | 2026-11-12 A | 2026-11-17 A | 34 | 100% |  | finish no earlier than 2026-10-30 |
| 38 |  | Validacion Integral Flujo Completo Admin-Agente-Colaborador | 2d | 2026-11-17 A | 2026-11-19 A | 37 | 100% |  | finish no earlier than 2026-10-31 |
| 39 |  | Revision de Usabilidad y Feedback Visual en Dispositivo | 1d | 2026-11-19 A | 2026-11-20 A | 38 | 100% |  | finish no earlier than 2026-10-31 |
| 40 |  | Hito 5: Pruebas E2E, Regresion y Modulos Conformes | 0d? | 2026-11-16 A | 2026-11-16 A | 36 | 100% |  | start no earlier than 2026-10-31 |
| 41 | 1.6 | **FASE 6: Certificacion ISO 25010 y Entrega Final Academica** | 3.88d? | 2026-11-16 A | 2026-11-20 |  | 77% | 0d |  |
| 42 |  | Evaluacion Checklists ISO 25010 y Peer Review | 2d | 2026-11-16 A | 2026-11-18 A | 40 | 100% |  | finish no earlier than 2026-11-01 |
| 43 |  | Consolidacion de Testware Final Storyboard y Excel en Drive | 1d | 2026-11-18 A | 2026-11-19 A | 42 | 100% |  | finish no earlier than 2026-11-01 |
| 44 |  | Presentacion y Entrega Final ante la Catedra | 0.88d | 2026-11-19 | 2026-11-20 | 43 |  | 0d | finish no earlier than 2026-11-02 |
| 45 |  | Hito 6: Dictamen de Aprobacion de Calidad de Software | 0d? | 2026-11-20 | 2026-11-20 | 44 |  | 0d | start no earlier than 2026-11-02 |

## Version 2 (data date 2026-11-01, saved 2026-11-01)

Note of the change: docs(testing): actualizar fin de proyecto al martes 03/11, fijar entrega al 02/11 y remover referencias al docente

Last finish 2026-11-20 → 2026-11-03 (-17d).

Added:

| ID | Task | Duration | Start | Finish | Constraint | Resources |
| --- | --- | --- | --- | --- | --- | --- |
| 46 | Hito 6: Dictamen de Aprobacion y Finalizacion | 0d? | 2026-11-03 | 2026-11-03 | start no earlier than 2026-11-03 | Equipo Completo |

Changed:

| ID | Task | Start | Finish | Duration | Complete | Total float | Predecessors | Other |
| --- | --- | --- | --- | --- | --- | --- | --- | --- |
| 1 | **Proyecto EcoAlerta - Ciclo de Vida y Testware de Calidad** |  | 2026-11-20 → 2026-11-03 (-17d) | 63.5d? → 50.88d? | 99% → 98% |  |  | resources Equipo Completo → none; baseline finish 2026-11-20 → 2026-11-03 |
| 2 | **FASE 1: Setup Arquitectura y Prototipos UI/UX** |  | 2026-09-08 A → 2026-09-07 A (-1d) | 10.88d? → 9.88d? |  |  |  | resources Rodriguez / Kuhn / Benitez A / Escobar → none; baseline finish 2026-09-08 → 2026-09-07 |
| 3 | Setup inicial y arquitectura client/server monorepo |  |  | 3.88d → 3.88d? |  |  |  |  |
| 4 | Wireframes y maquetacion UI/UX HomeScreen inicial | 2026-08-28 A → 2026-08-26 A (-2d) | 2026-09-02 A → 2026-08-30 A (-3d) | 3d → 3d? |  |  | 3 → none | baseline start 2026-08-28 → 2026-08-26; baseline finish 2026-09-02 → 2026-08-30 |
| 5 | Setup Backend Express TypeScript y Prisma ORM | 2026-08-28 A → 2026-08-27 A (-1d) | 2026-09-02 A → 2026-08-31 A (-2d) | 2.88d → 2.88d? |  |  | 3 → none | baseline start 2026-08-28 → 2026-08-27; baseline finish 2026-09-02 → 2026-08-31 |
| 6 | Contexto de Carrito y navegacion inicial | 2026-09-02 A → 2026-08-31 A (-2d) | 2026-09-07 A → 2026-09-03 A (-4d) | 2.88d → 3.88d? |  |  | 5 → none | constraint finish no earlier than 2026-09-02 → finish no earlier than 2026-09-03; baseline start 2026-09-02 → 2026-08-31; baseline finish 2026-09-07 → 2026-09-03 |
| 7 | Estandares Scrum y alineacion de calidad | 2026-09-02 A → 2026-09-01 A (-1d) | 2026-09-08 A → 2026-09-05 A (-3d) | 4d → 4d? |  |  | 4 → none | baseline start 2026-09-02 → 2026-09-01; baseline finish 2026-09-08 → 2026-09-05 |
| 8 | Hito 1: Cimientos de Arquitectura y UI Aprobados | 2026-09-08 A → 2026-09-07 A (-1d) | 2026-09-08 A → 2026-09-07 A (-1d) |  |  |  | 7 → none | baseline start 2026-09-08 → 2026-09-07; baseline finish 2026-09-08 → 2026-09-07 |
| 9 | **FASE 2: Desarrollo Core Frontend y Modulos Base** |  | 2026-10-08 A → 2026-09-30 A (-8d) | 21.5d? → 16.88d? |  |  |  | resources Rodriguez / Kuhn / Benitez F → none; baseline finish 2026-10-08 → 2026-09-30 |
| 10 | Pantallas Perfil y MasScreen con mockups |  | 2026-09-14 A → 2026-09-12 A (-2d) | 3.88d → 4d? |  |  | 8 → none | constraint finish no earlier than 2026-09-11 → finish no earlier than 2026-09-12; baseline finish 2026-09-14 → 2026-09-12 |
| 11 | Modulo Operativo Agente de Campo y vistas |  | 2026-09-14 A → 2026-09-15 A (+1d) | 4d → 5.88d? |  |  | 8 → none | constraint finish no earlier than 2026-09-13 → finish no earlier than 2026-09-15; baseline finish 2026-09-14 → 2026-09-15 |
| 12 | Integracion camara nativa Expo y selector galeria | 2026-09-14 A → 2026-09-09 A (-5d) | 2026-09-17 A → 2026-09-16 A (-1d) | 3d → 5.88d? |  |  | 10 → none | constraint finish no earlier than 2026-09-13 → finish no earlier than 2026-09-16; baseline start 2026-09-14 → 2026-09-09; baseline finish 2026-09-17 → 2026-09-16 |
| 13 | Refinamiento visual UI de Tienda y Carrito | 2026-09-17 A → 2026-09-14 A (-3d) | 2026-09-23 A → 2026-09-22 A (-1d) | 3.88d → 6.88d? |  |  | 12 → none | constraint finish no earlier than 2026-09-16 → finish no earlier than 2026-09-22; baseline start 2026-09-17 → 2026-09-14; baseline finish 2026-09-23 → 2026-09-22 |
| 14 | Integracion Home Administrador Municipal | 2026-09-23 A → 2026-09-18 A (-5d) | 2026-10-02 A → 2026-09-28 A (-4d) | 6.88d → 6.88d? |  |  | 13 → none | constraint finish no earlier than 2026-09-29 → finish no earlier than 2026-09-28; baseline start 2026-09-23 → 2026-09-18; baseline finish 2026-10-02 → 2026-09-28 |
| 15 | Revision de usabilidad y pruebas exploratorias | 2026-10-02 A → 2026-09-23 A (-9d) | 2026-10-08 A → 2026-09-30 A (-8d) | 3.88d → 5.88d? |  |  | 14 → none | baseline start 2026-10-02 → 2026-09-23; baseline finish 2026-10-08 → 2026-09-30 |
| 16 | Hito 2: Interfaces Core y Mockups Integrados | 2026-10-08 A → 2026-09-30 A (-8d) | 2026-10-08 A → 2026-09-30 A (-8d) |  |  |  | 15 → none | baseline start 2026-10-08 → 2026-09-30; baseline finish 2026-10-08 → 2026-09-30 |
| 17 | **FASE 3: Especificacion Formal SDD Base de Datos y Backend** | 2026-10-08 A → 2026-10-01 A (-7d) | 2026-10-29 A → 2026-10-18 A (-11d) | 14.75d? → 12d? |  |  |  | resources Benitez A / Escobar / Rodriguez → none; baseline start 2026-10-08 → 2026-10-01; baseline finish 2026-10-29 → 2026-10-18 |
| 18 | Migracion a Supabase PostgreSQL y Prisma ORM | 2026-10-08 A → 2026-10-01 A (-7d) | 2026-10-22 A → 2026-10-14 A (-8d) | 9.88d → 9.88d? |  |  | 16 → none | baseline start 2026-10-08 → 2026-10-01; baseline finish 2026-10-22 → 2026-10-14 |
| 19 | Adopcion Spec-Driven Development y Backlog HU | 2026-10-22 A → 2026-10-12 A (-10d) | 2026-10-26 A → 2026-10-15 A (-11d) | 1.88d → 3.88d? |  |  | 18 → none | baseline start 2026-10-22 → 2026-10-12; baseline finish 2026-10-26 → 2026-10-15 |
| 20 | Endpoints REST Triaje Asignacion y Concurrencia | 2026-10-26 A → 2026-10-14 A (-12d) | 2026-10-28 A → 2026-10-18 A (-10d) | 2d → 3d? |  |  | 19 → none | baseline start 2026-10-26 → 2026-10-14; baseline finish 2026-10-28 → 2026-10-18 |
| 21 | Integracion Servicios REST y Cliente Movil | 2026-10-26 A → 2026-10-14 A (-12d) | 2026-10-28 A → 2026-10-18 A (-10d) | 2d → 3d? |  |  | 19 → none | baseline start 2026-10-26 → 2026-10-14; baseline finish 2026-10-28 → 2026-10-18 |
| 22 | Acreditacion de Puntos Saneamiento y Canjes | 2026-10-28 A → 2026-10-15 A (-13d) | 2026-10-29 A → 2026-10-18 A (-11d) | 1d → 2d? |  |  | 20 → none | baseline start 2026-10-28 → 2026-10-15; baseline finish 2026-10-29 → 2026-10-18 |
| 23 | Hito 3: Backend Supabase y Modulos 001-006 Conectados | 2026-10-29 A → 2026-10-18 A (-11d) | 2026-10-29 A → 2026-10-18 A (-11d) |  |  |  | 22 → none | baseline start 2026-10-29 → 2026-10-18; baseline finish 2026-10-29 → 2026-10-18 |
| 24 | **FASE 4: Finalizacion de Modulos Testware y Correccion Bugs** | 2026-10-29 A → 2026-10-19 A (-10d) | 2026-11-16 A → 2026-10-28 A (-19d) | 12.25d? → 7.88d? |  |  |  | resources Equipo Completo → none; baseline start 2026-10-29 → 2026-10-19; baseline finish 2026-11-16 → 2026-10-28 |
| 25 | Cierre Modulo 001 Auth RBAC y Logout Seguro | 2026-10-29 A → 2026-10-19 A (-10d) | 2026-11-02 A → 2026-10-22 A (-11d) | 2.88d → 3.88d? |  |  | 23 → none | constraint finish no earlier than 2026-10-21 → finish no earlier than 2026-10-22; baseline start 2026-10-29 → 2026-10-19; baseline finish 2026-11-02 → 2026-10-22 |
| 26 | Cierre Modulo 002 Reporte Ciudadano y GPS | 2026-11-03 A → 2026-10-21 A (-13d) | 2026-11-05 A → 2026-10-24 A (-12d) | 3d → 3d? |  |  | 25 → none | baseline start 2026-11-03 → 2026-10-21; baseline finish 2026-11-05 → 2026-10-24 |
| 27 | Upgrade Expo SDK 58 y Resiliencia de Red | 2026-11-06 A → 2026-10-23 A (-14d) | 2026-11-06 A → 2026-10-26 A (-11d) | 0.88d → 1.88d? |  |  | 26 → none | baseline start 2026-11-06 → 2026-10-23; baseline finish 2026-11-06 → 2026-10-26 |
| 28 | Plan Maestro de Testing IEEE 829 y Matriz RTM | 2026-11-06 A → 2026-10-26 A (-11d) | 2026-11-10 A → 2026-10-27 A (-14d) | 1.88d → 1.88d? |  |  | 27 → none | baseline start 2026-11-06 → 2026-10-26; baseline finish 2026-11-10 → 2026-10-27 |
| 29 | Diseno de 67 Casos de Prueba Detallados | 2026-11-06 A → 2026-10-26 A (-11d) | 2026-11-10 A → 2026-10-27 A (-14d) | 1.88d → 1.88d? |  |  | 27 → none | baseline start 2026-11-06 → 2026-10-26; baseline finish 2026-11-10 → 2026-10-27 |
| 30 | Correccion de BUG-101 en Compresion de Imagen | 2026-11-10 A → 2026-10-26 A (-15d) | 2026-11-12 A → 2026-10-28 A (-15d) | 1.88d → 2.88d? |  |  | 29 → none | baseline start 2026-11-10 → 2026-10-26; baseline finish 2026-11-12 → 2026-10-28 |
| 31 | Correccion de BUG-102 en Reserva Stock Concurrente | 2026-11-10 A → 2026-10-26 A (-15d) | 2026-11-12 A → 2026-10-28 A (-15d) | 1.88d → 2.88d? |  |  | 29 → none | baseline start 2026-11-10 → 2026-10-26; baseline finish 2026-11-12 → 2026-10-28 |
| 32 | Modulo 007 Alta Personal Municipal y Foto Camara | 2026-11-12 A → 2026-10-27 A (-16d) | 2026-11-13 A → 2026-10-28 A (-16d) | 0.88d → 1.88d? |  |  | 31 → none | baseline start 2026-11-12 → 2026-10-27; baseline finish 2026-11-13 → 2026-10-28 |
| 33 | Modulo 007 Gestion Colaboradores y Baja Transaccional | 2026-11-13 A → 2026-10-27 A (-17d) | 2026-11-16 A → 2026-10-28 A (-19d) | 0.88d → 1.88d? |  |  | 32 → none | baseline start 2026-11-13 → 2026-10-27; baseline finish 2026-11-16 → 2026-10-28 |
| 34 | Hito 4: Testware y Defectos 100% Corregidos | 2026-11-12 A → 2026-10-28 A (-15d) | 2026-11-12 A → 2026-10-28 A (-15d) |  |  |  | 30 → none | baseline start 2026-11-12 → 2026-10-28; baseline finish 2026-11-12 → 2026-10-28 |
| 35 | **FASE 5: Ejecucion de Pruebas E2E Regresion y Modulo 008** | 2026-11-12 A → 2026-10-28 A (-15d) | 2026-11-20 A → 2026-10-31 A (-20d) | 5.88d? → 3d? |  |  |  | resources Benitez F / Rodriguez / Angel / Kuhn → none; baseline start 2026-11-12 → 2026-10-28; baseline finish 2026-11-20 → 2026-10-31 |
| 36 | Modulo 008 Onboarding 3 Tarjetas Categorias y Storage | 2026-11-12 A → 2026-10-28 A (-15d) | 2026-11-16 A → 2026-10-31 A (-16d) | 2d → 3d? |  |  | 34 → none | baseline start 2026-11-12 → 2026-10-28; baseline finish 2026-11-16 → 2026-10-31 |
| 37 | Ejecucion de Suites E2E y Pruebas de Regresion (146 tests) | 2026-11-12 A → 2026-10-28 A (-15d) | 2026-11-17 A → 2026-10-30 A (-18d) | 2.88d → 2.88d? |  |  | 34 → none | baseline start 2026-11-12 → 2026-10-28; baseline finish 2026-11-17 → 2026-10-30 |
| 38 | Validacion Integral Flujo Completo Admin-Agente-Colaborador | 2026-11-17 A → 2026-10-29 A (-19d) | 2026-11-19 A → 2026-10-31 A (-19d) | 2d → 2d? |  |  | 37 → none | baseline start 2026-11-17 → 2026-10-29; baseline finish 2026-11-19 → 2026-10-31 |
| 39 | Revision de Usabilidad y Feedback Visual en Dispositivo | 2026-11-19 A → 2026-10-30 A (-20d) | 2026-11-20 A → 2026-10-31 A (-20d) | 1d → 1d? |  |  | 38 → none | baseline start 2026-11-19 → 2026-10-30; baseline finish 2026-11-20 → 2026-10-31 |
| 40 | Hito 5: Pruebas E2E, Regresion y Modulos Conformes | 2026-11-16 A → 2026-10-31 A (-16d) | 2026-11-16 A → 2026-10-31 A (-16d) |  |  |  | 36 → none | baseline start 2026-11-16 → 2026-10-31; baseline finish 2026-11-16 → 2026-10-31 |
| 41 | **FASE 6: Certificacion ISO 25010 y Cierre del Proyecto** | 2026-11-16 A → 2026-10-30 A (-17d) | 2026-11-20 → 2026-11-03 (-17d) | 3.88d? → 2.88d? | 77% → 53% |  |  | was named FASE 6: Certificacion ISO 25010 y Entrega Final Academica; resources Equipo Completo → none; baseline start 2026-11-16 → 2026-10-30; baseline finish 2026-11-20 → 2026-11-03 |
| 42 | Evaluacion Checklists ISO 25010 y Peer Review | 2026-11-16 A → 2026-10-30 A (-17d) | 2026-11-18 A → 2026-11-01 A (-17d) | 2d → 1d? |  |  | 40 → none | baseline start 2026-11-16 → 2026-10-30; baseline finish 2026-11-18 → 2026-11-01 |
| 43 | Consolidacion de Testware Final Storyboard y Excel en Drive | 2026-11-18 A → 2026-10-30 A (-19d) | 2026-11-19 A → 2026-11-01 A (-18d) | 1d → 1d? |  |  | 42 → none | baseline start 2026-11-18 → 2026-10-30; baseline finish 2026-11-19 → 2026-11-01 |
| 44 | Entrega de Documentacion y Testware Final (Lunes 02/11) | 2026-11-19 → 2026-11-02 (-17d) | 2026-11-20 → 2026-11-02 (-18d) | 0.88d → 0.88d? |  | 0d → 1d | 43 → none | was named Presentacion y Entrega Final ante la Catedra; resources Equipo Completo / Mg. Pedro Brest → Equipo Completo; baseline start 2026-11-19 → 2026-11-02; baseline finish 2026-11-20 → 2026-11-02 |
| 45 | Cierre del Proyecto y Evaluacion Final (Martes 03/11) | 2026-11-20 → 2026-11-03 (-17d) | 2026-11-20 → 2026-11-03 (-17d) | 0d? → 0.88d? |  |  | 44 → none | was named Hito 6: Dictamen de Aprobacion de Calidad de Software; constraint start no earlier than 2026-11-02 → finish no earlier than 2026-11-03; resources Mg. Pedro Brest → Equipo Completo; baseline start 2026-11-20 → 2026-11-03; baseline finish 2026-11-20 → 2026-11-03 |

## Version 3 (data date 2026-11-01, saved 2026-11-01)

Note of the change: docs(testing): incorporar premisas de días cerrados e hitos de 0 días en estimación CPM y armonizar con MS Project

Last finish 2026-11-03 → 2026-11-04 (+1d). Complete tasks 36 → 22.

Changed:

| ID | Task | Start | Finish | Duration | Complete | Total float | Other |
| --- | --- | --- | --- | --- | --- | --- | --- |
| 1 | **Proyecto EcoAlerta - Ciclo de Vida y Testware de Calidad** |  | 2026-11-03 → 2026-11-04 (+1d) | 50.88d? → 51.88d | 98% → 96% |  |  |
| 2 | **FASE 1: Setup Arquitectura y Prototipos UI/UX** |  | 2026-09-07 A → 2026-09-07 | 9.88d? → 9.88d | 100% → 98% | none → 42d |  |
| 3 | Setup inicial y arquitectura client/server monorepo |  | 2026-08-28 A → 2026-08-28 | 3.88d? → 4d | 100% → 97% | none → 47.88d |  |
| 4 | Wireframes y maquetacion UI/UX HomeScreen inicial |  |  | 3d? → 3d |  |  |  |
| 5 | Setup Backend Express TypeScript y Prisma ORM |  | 2026-08-31 A → 2026-08-31 | 2.88d? → 3d | 100% → 96% | none → 46.88d |  |
| 6 | Contexto de Carrito y navegacion inicial |  | 2026-09-03 A → 2026-09-03 | 3.88d? → 4d | 100% → 97% | none → 43.88d |  |
| 7 | Estandares Scrum y alineacion de calidad |  |  | 4d? → 4d |  |  |  |
| 8 | Hito 1: Cimientos de Arquitectura y UI Aprobados |  |  | 0d? → 0d |  |  |  |
| 9 | **FASE 2: Desarrollo Core Frontend y Modulos Base** |  | 2026-09-30 A → 2026-09-30 | 16.88d? → 17d | 100% → 99% | none → 24.88d |  |
| 10 | Pantallas Perfil y MasScreen con mockups |  |  | 4d? → 4d |  |  |  |
| 11 | Modulo Operativo Agente de Campo y vistas |  | 2026-09-15 A → 2026-09-15 | 5.88d? → 6d | 100% → 98% | none → 35.88d |  |
| 12 | Integracion camara nativa Expo y selector galeria |  | 2026-09-16 A → 2026-09-16 | 5.88d? → 6d | 100% → 98% | none → 34.88d |  |
| 13 | Refinamiento visual UI de Tienda y Carrito |  | 2026-09-22 A → 2026-09-21 A (-1d) | 6.88d? → 6d |  |  |  |
| 14 | Integracion Home Administrador Municipal |  | 2026-09-28 A → 2026-09-28 | 6.88d? → 7d | 100% → 98% | none → 26.88d |  |
| 15 | Revision de usabilidad y pruebas exploratorias |  | 2026-09-30 A → 2026-09-30 | 5.88d? → 6d | 100% → 98% | none → 24.88d |  |
| 16 | Hito 2: Interfaces Core y Mockups Integrados |  |  | 0d? → 0d |  |  |  |
| 17 | **FASE 3: Especificacion Formal SDD Base de Datos y Backend** |  | 2026-10-18 A → 2026-10-18 | 12d? → 12d | 100% → 99% | none → 12.88d |  |
| 18 | Migracion a Supabase PostgreSQL y Prisma ORM |  | 2026-10-14 A → 2026-10-13 A (-1d) | 9.88d? → 9d |  |  |  |
| 19 | Adopcion Spec-Driven Development y Backlog HU |  | 2026-10-15 A → 2026-10-15 | 3.88d? → 4d | 100% → 97% | none → 13.88d |  |
| 20 | Endpoints REST Triaje Asignacion y Concurrencia |  |  | 3d? → 3d |  |  |  |
| 21 | Integracion Servicios REST y Cliente Movil |  |  | 3d? → 3d |  |  |  |
| 22 | Acreditacion de Puntos Saneamiento y Canjes |  |  | 2d? → 2d |  |  |  |
| 23 | Hito 3: Backend Supabase y Modulos 001-006 Conectados |  |  | 0d? → 0d |  |  |  |
| 24 | **FASE 4: Finalizacion de Modulos Testware y Correccion Bugs** |  | 2026-10-28 A → 2026-10-28 | 7.88d? → 8d | 100% → 97% | none → 4.88d |  |
| 25 | Cierre Modulo 001 Auth RBAC y Logout Seguro |  | 2026-10-22 A → 2026-10-22 | 3.88d? → 4d | 100% → 97% | none → 8.88d |  |
| 26 | Cierre Modulo 002 Reporte Ciudadano y GPS |  |  | 3d? → 3d |  |  |  |
| 27 | Upgrade Expo SDK 58 y Resiliencia de Red |  | 2026-10-26 A → 2026-10-26 | 1.88d? → 2d | 100% → 94% | none → 6.88d |  |
| 28 | Plan Maestro de Testing IEEE 829 y Matriz RTM |  | 2026-10-27 A → 2026-10-27 | 1.88d? → 2d | 100% → 94% | none → 5.88d |  |
| 29 | Diseno de 67 Casos de Prueba Detallados |  | 2026-10-27 A → 2026-10-27 | 1.88d? → 2d | 100% → 94% | none → 5.88d |  |
| 30 | Correccion de BUG-101 en Compresion de Imagen |  | 2026-10-28 A → 2026-10-27 A (-1d) | 2.88d? → 2d |  |  |  |
| 31 | Correccion de BUG-102 en Reserva Stock Concurrente |  | 2026-10-28 A → 2026-10-27 A (-1d) | 2.88d? → 2d |  |  |  |
| 32 | Modulo 007 Alta Personal Municipal y Foto Camara |  | 2026-10-28 A → 2026-10-27 A (-1d) | 1.88d? → 1d |  |  |  |
| 33 | Modulo 007 Gestion Colaboradores y Baja Transaccional |  | 2026-10-28 A → 2026-10-28 | 1.88d? → 2d | 100% → 94% | none → 4.88d |  |
| 34 | Hito 4: Testware y Defectos 100% Corregidos |  |  | 0d? → 0d |  |  |  |
| 35 | **FASE 5: Ejecucion de Pruebas E2E Regresion y Modulo 008** |  | 2026-10-31 A → 2026-10-31 | 3d? → 3d | 100% → 99% | none → 2.88d |  |
| 36 | Modulo 008 Onboarding 3 Tarjetas Categorias y Storage |  |  | 3d? → 3d |  |  |  |
| 37 | Ejecucion de Suites E2E y Pruebas de Regresion (146 tests) |  | 2026-10-30 A → 2026-10-30 | 2.88d? → 3d | 100% → 96% | none → 2.88d |  |
| 38 | Validacion Integral Flujo Completo Admin-Agente-Colaborador |  |  | 2d? → 2d |  |  |  |
| 39 | Revision de Usabilidad y Feedback Visual en Dispositivo |  |  | 1d? → 1d |  |  |  |
| 40 | Hito 5: Pruebas E2E, Regresion y Modulos Conformes |  |  | 0d? → 0d |  |  |  |
| 41 | **FASE 6: Certificacion ISO 25010 y Cierre del Proyecto** |  | 2026-11-03 → 2026-11-04 (+1d) | 2.88d? → 3.88d | 53% → 40% |  |  |
| 42 | Evaluacion Checklists ISO 25010 y Peer Review |  |  | 1d? → 1d |  |  |  |
| 43 | Consolidacion de Testware Final Storyboard y Excel en Drive |  |  | 1d? → 1d |  |  |  |
| 44 | Entrega de Documentacion y Testware Final (Lunes 02/11) |  |  | 0.88d? → 1d |  | 1d → 1.88d | constraint finish no earlier than 2026-11-02 → start no earlier than 2026-11-02 |
| 45 | Cierre del Proyecto y Evaluacion Final (Martes 03/11) | 2026-11-03 → 2026-11-02 (-1d) |  | 0.88d? → 1d |  | 0d → 1d |  |
| 46 | Hito 6: Dictamen de Aprobacion y Finalizacion |  | 2026-11-03 → 2026-11-04 (+1d) | 0d? → 1d |  |  |  |
